# Children's Book Schedule

Schedule from MS Project, 2015-04-06 to 2026-01-22, costs in $, A marks actual dates.
Lucerne Publishing

## Calendars

- Standard: Mon-Fri 08:00-12:00, 13:00-17:00; Sat-Sun off.
- Monday-Wednesday: Mon-Wed 08:00-12:00, 13:00-17:00; Thu-Sun off.

## Resources

| Resource | Group | Unit | Rate |
| --- | --- | --- | --- |
| Carole Poland | Editorial |  | 52.5 |
| Copyeditors | Editorial |  | 45 |
| Dan Jump | Design |  | 75.5 |
| Hany Morcos | Editorial |  | 38.75 |
| Jane Dow | Editorial |  | 63.25 |
| Jun Cao | Editorial |  | 42 |
| Luis Sousa | Design |  | 70 |
| Printing Service | Production |  |  |
| Travel | Other |  |  |
| Tad Orman | Other |  |  |
| Color Setting Services | Production |  |  |
| Bound galley proofs | Production | copies | 15 |

## Schedule

| ID | WBS | Task | Type | Duration | Start | Finish | Predecessors | Complete | Remaining | Baseline start | Baseline finish | Baseline duration | Total slack | Constraint | Deadline | Resources | Work | Actual work | Cost | Baseline cost | Actual cost | Editorial Focus |
| --- | --- | --- | --- | --- | --- | --- | --- | --- | --- | --- | --- | --- | --- | --- | --- | --- | --- | --- | --- | --- | --- | --- |
| 1 | 1 | **Editorial staff meeting** |  | 2730.12d | 2015-04-13 08:00 A | 2025-09-29 09:00 |  | 54% | 1260.06d | 2015-04-13 08:00 | 2015-07-06 09:00 | 60.12d | 83.88d |  |  |  | 45.5h | 24.5h | 2,223 | 2,223 | 1,197 |  |
| 2 | 1.1 | Editorial staff meeting 1 |  | 1h | 2015-04-13 08:00 A | 2015-04-13 09:00 A |  | 100% |  | 2015-04-13 08:00 | 2015-04-13 09:00 | 1h |  | start no earlier than 2015-04-13 08:00 |  | Carole Poland; Jun Cao; Hany Morcos; Dan Jump [50%] | 3.5h | 3.5h | 171 | 171 | 171 |  |
| 3 | 1.2 | Editorial staff meeting 2 |  | 1h | 2015-04-20 08:00 A | 2015-04-20 09:00 A |  | 100% |  | 2015-04-20 08:00 | 2015-04-20 09:00 | 1h |  | start no earlier than 2015-04-20 08:00 |  | Carole Poland; Jun Cao; Hany Morcos; Dan Jump [50%] | 3.5h | 3.5h | 171 | 171 | 171 |  |
| 4 | 1.3 | Editorial staff meeting 3 |  | 1h | 2015-04-27 08:00 A | 2015-04-27 09:00 A |  | 100% |  | 2015-04-27 08:00 | 2015-04-27 09:00 | 1h |  | start no earlier than 2015-04-27 08:00 |  | Carole Poland; Jun Cao; Hany Morcos; Dan Jump [50%] | 3.5h | 3.5h | 171 | 171 | 171 |  |
| 5 | 1.4 | Editorial staff meeting 4 |  | 1h | 2015-05-04 08:00 A | 2015-05-04 09:00 A |  | 100% |  | 2015-05-04 08:00 | 2015-05-04 09:00 | 1h |  | start no earlier than 2015-05-04 08:00 |  | Carole Poland; Jun Cao; Hany Morcos; Dan Jump [50%] | 3.5h | 3.5h | 171 | 171 | 171 |  |
| 6 | 1.5 | Editorial staff meeting 5 |  | 1h | 2015-05-11 08:00 A | 2015-05-11 09:00 A |  | 100% |  | 2015-05-11 08:00 | 2015-05-11 09:00 | 1h |  | start no earlier than 2015-05-11 08:00 |  | Carole Poland; Jun Cao; Hany Morcos; Dan Jump [50%] | 3.5h | 3.5h | 171 | 171 | 171 |  |
| 7 | 1.6 | Editorial staff meeting 6 |  | 1h | 2015-05-18 08:00 A | 2015-05-18 09:00 A |  | 100% |  | 2015-05-18 08:00 | 2015-05-18 09:00 | 1h |  | start no earlier than 2015-05-18 08:00 |  | Carole Poland; Jun Cao; Hany Morcos; Dan Jump [50%] | 3.5h | 3.5h | 171 | 171 | 171 |  |
| 8 | 1.7 | Editorial staff meeting 7 |  | 1h | 2015-05-25 08:00 A | 2015-05-25 09:00 A |  | 100% |  | 2015-05-25 08:00 | 2015-05-25 09:00 | 1h |  | start no earlier than 2015-05-25 08:00 |  | Carole Poland; Jun Cao; Hany Morcos; Dan Jump [50%] | 3.5h | 3.5h | 171 | 171 | 171 |  |
| 9 | 1.8 | Editorial staff meeting 8 |  | 1h | 2025-09-29 08:00 | 2025-09-29 09:00 |  |  |  | 2015-06-01 08:00 | 2015-06-01 09:00 | 1h | 83.88d | start no earlier than 2025-09-27 17:00 |  | Carole Poland; Jun Cao; Hany Morcos; Dan Jump [50%] | 3.5h |  | 171 | 171 |  |  |
| 10 | 1.9 | Editorial staff meeting 9 |  | 1h | 2025-09-29 08:00 | 2025-09-29 09:00 |  |  |  | 2015-06-08 08:00 | 2015-06-08 09:00 | 1h | 83.88d | start no earlier than 2025-09-27 17:00 |  | Carole Poland; Jun Cao; Hany Morcos; Dan Jump [50%] | 3.5h |  | 171 | 171 |  |  |
| 11 | 1.10 | Editorial staff meeting 10 |  | 1h | 2025-09-29 08:00 | 2025-09-29 09:00 |  |  |  | 2015-06-15 08:00 | 2015-06-15 09:00 | 1h | 83.88d | start no earlier than 2025-09-27 17:00 |  | Carole Poland; Jun Cao; Hany Morcos; Dan Jump [50%] | 3.5h |  | 171 | 171 |  |  |
| 12 | 1.11 | Editorial staff meeting 11 |  | 1h | 2025-09-29 08:00 | 2025-09-29 09:00 |  |  |  | 2015-06-22 08:00 | 2015-06-22 09:00 | 1h | 83.88d | start no earlier than 2025-09-27 17:00 |  | Carole Poland; Jun Cao; Hany Morcos; Dan Jump [50%] | 3.5h |  | 171 | 171 |  |  |
| 13 | 1.12 | Editorial staff meeting 12 |  | 1h | 2025-09-29 08:00 | 2025-09-29 09:00 |  |  |  | 2015-06-29 08:00 | 2015-06-29 09:00 | 1h | 83.88d | start no earlier than 2025-09-27 17:00 |  | Carole Poland; Jun Cao; Hany Morcos; Dan Jump [50%] | 3.5h |  | 171 | 171 |  |  |
| 14 | 1.13 | Editorial staff meeting 13 |  | 1h | 2025-09-29 08:00 | 2025-09-29 09:00 |  |  |  | 2015-07-06 08:00 | 2015-07-06 09:00 | 1h | 83.88d | start no earlier than 2025-09-27 17:00 |  | Carole Poland; Jun Cao; Hany Morcos; Dan Jump [50%] | 3.5h |  | 171 | 171 |  |  |
| 15 | 2 | **Acquisition** |  | 37d | 2015-04-06 08:00 A | 2015-05-26 17:00 A |  | 100% |  | 2015-04-06 08:00 | 2015-05-25 12:00 | 35.5d |  |  |  |  | 468h | 468h | 18,804 | 18,264 | 18,804 |  |
| 16 | 2.1 | Manuscript received | milestone | 0d | 2015-04-06 08:00 A | 2015-04-06 08:00 A |  | 100% |  | 2015-04-06 08:00 | 2015-04-06 08:00 | 0d |  |  |  |  |  |  |  |  |  |  |
| 17 | 2.2 | Content edit |  | 15d | 2015-04-06 08:00 A | 2015-04-30 10:00 A | 16 | 100% |  | 2015-04-06 08:00 | 2015-04-30 10:00 | 15d |  |  |  | Carole Poland | 120h | 120h | 6,300 | 6,300 | 6,300 | Full developmental edit |
| 18 | 2.3 | Original art review |  | 10.25d | 2015-04-23 10:00 A | 2015-05-07 12:00 A | 17FS-5d | 100% |  | 2015-04-23 10:00 | 2015-05-07 12:00 | 10.25d |  |  |  | Hany Morcos; Jane Dow | 164h | 164h | 8,364 | 8,364 | 8,364 |  |
| 19 | 2.4 | Author review of content edit |  | 13.5d | 2015-05-07 13:00 A | 2015-05-26 17:00 A | 17, 18 | 100% |  | 2015-05-07 13:00 | 2015-05-25 12:00 | 12d |  |  |  | Tad Orman; Copyeditors | 184h | 184h | 4,140 | 3,600 | 4,140 | Incorp must-fix issues |
| 20 | 2.5 | Handoff to Editorial | milestone | 0d | 2015-05-26 17:00 A | 2015-05-26 17:00 A | 19 | 100% |  | 2015-05-25 12:00 | 2015-05-25 12:00 | 0d |  |  | 2015-05-29 17:00 | Carole Poland |  |  |  |  |  |  |
| 21 | 3 | **Editorial** |  | 28.4d | 2015-05-27 08:00 A | 2015-07-06 11:12 A | 15 | 100% |  | 2015-05-25 13:00 | 2015-07-03 14:00 | 29.12d |  |  |  |  | 413h | 413h | 16,201 | 15,670 | 16,201 |  |
| 22 | 3.1 | Organize manuscript for copyedit |  | 5d | 2015-05-27 08:00 A | 2015-06-02 17:00 A |  | 100% |  | 2015-05-25 13:00 | 2015-06-01 14:00 | 5.12d |  |  |  | Hany Morcos; Dan Jump [50%] | 63h | 63h | 3,213 | 3,060 | 3,213 | Address outstanding line edit issues |
| 23 | 3.2 | Copyedit |  | 10.5d | 2015-06-03 08:00 A | 2015-06-17 12:00 A | 22 | 100% |  | 2015-06-01 14:00 | 2015-06-16 16:00 | 11.25d |  |  |  | Copyeditors [200%] | 188h | 188h | 8,460 | 8,100 | 8,460 | Style Guide compliance |
| 24 | 3.3 | Author review of copyedit |  | 10.2d | 2015-06-17 13:00 A | 2015-07-01 14:36 A | 23 | 100% |  | 2015-06-16 16:00 | 2015-06-30 16:00 | 10d |  |  |  | Tad Orman; Copyeditors [25%] | 102h | 102h | 918 | 900 | 918 | Incorp must-fix issues |
| 25 | 3.4 | Copyedit incorp |  | 5.12d | 2015-06-29 09:12 A | 2015-07-06 11:12 A | 24FS-2.5% | 100% |  | 2015-06-26 11:00 | 2015-07-03 14:00 | 5.12d |  |  |  | Carole Poland; Dan Jump [50%] | 60h | 60h | 3,610 | 3,610 | 3,610 | Incorp must-fix issues |
| 26 | 3.5 | Handoff to Production | milestone | 0d | 2015-07-06 11:12 A | 2015-07-06 11:12 A | 25 | 100% |  | 2015-07-03 14:00 | 2015-07-03 14:00 | 0d |  |  |  | Hany Morcos |  |  |  |  |  |  |

| ID | WBS | Task | Type | Duration | Start | Finish | Predecessors | Complete | Remaining | Baseline start | Baseline finish | Baseline duration | Total slack | Free slack | Constraint | Calendar | Resources | Work | Actual work | Cost | Baseline cost | Actual cost |
| --- | --- | --- | --- | --- | --- | --- | --- | --- | --- | --- | --- | --- | --- | --- | --- | --- | --- | --- | --- | --- | --- | --- |
| 27 | 4 | **Design and Production** |  | 2709.1d | 2015-07-06 11:12 A | 2025-11-21 12:00 | 21 | 43% | 1546.14d | 2015-07-03 14:00 | 2015-09-23 16:00 | 58.25d | 0.5d |  |  |  |  | 927.6h | 431.6h | 48,863.5 | 46,679 | 23,544.5 |
| 28 | 4.1 | Set pages |  | 15d | 2015-07-06 11:12 A | 2015-07-27 11:12 A |  | 100% |  | 2015-07-03 14:00 | 2015-07-24 14:00 | 15d |  |  |  |  | Jane Dow | 120h | 120h | 7,590 | 7,590 | 7,590 |
| 29 | 4.2 | Interior illustration design |  | 17.6d | 2015-07-06 11:12 A | 2015-07-29 17:00 A | 28SS | 100% |  | 2015-07-03 14:00 | 2015-07-24 16:00 | 15.25d |  |  |  |  | Luis Sousa; Hany Morcos | 279.6h | 279.6h | 15,234.5 | 13,050 | 15,234.5 |
| 30 | 4.3 | **Đánh giá các trang lần thứ** |  | 2680d | 2015-07-30 08:00 A | 2025-11-05 17:00 | 29 | 7% | 2501.33d | 2015-07-24 16:00 | 2015-09-04 16:00 | 30d | 0.5d | 0d |  |  |  | 320h | 32h | 13,860 | 13,860 | 720 |
| 31 | 4.3.1 | Hiệu đỉnh và lập chỉ mục |  | 10d | 2015-07-30 08:00 A | 2025-10-08 17:00 |  | 20% | 8d | 2015-07-24 16:00 | 2015-08-07 16:00 | 10d | 0.5d | 0d | start no earlier than 2015-07-17 08:00 |  | Tad Orman; Copyeditors | 100h | 32h | 900 | 900 | 720 |
| 32 | 4.3.2 | Kết hợp đánh giá các trang lần thứ |  | 10d | 2025-10-09 08:00 | 2025-10-22 17:00 | 31 |  |  | 2015-08-07 16:00 | 2015-08-21 16:00 | 10d | 0.5d | 0d | start no earlier than 2025-09-27 17:00 |  | Hany Morcos; Dan Jump [50%] | 120h |  | 6,120 | 6,120 |  |
| 33 | 4.3.3 | Send proofed pages to Production | milestone | 0d | 2025-10-22 17:00 | 2025-10-22 17:00 | 32 |  |  | 2015-08-21 16:00 | 2015-08-21 16:00 | 0d | 0.5d | 0d | start no earlier than 2025-09-27 17:00 |  | Hany Morcos |  |  |  |  |  |
| 34 | 4.3.4 | Enter page corrections and index |  | 5d | 2025-10-23 08:00 | 2025-10-29 17:00 | 33 |  |  | 2015-08-21 16:00 | 2015-08-28 16:00 | 5d | 0.5d | 0d | start no earlier than 2025-09-27 17:00 |  | Jane Dow; Dan Jump [50%] | 60h |  | 4,040 | 4,040 |  |
| 35 | 4.3.5 | Cover design |  | 5d | 2025-10-30 08:00 | 2025-11-05 17:00 | 34 |  |  | 2015-08-28 16:00 | 2015-09-04 16:00 | 5d | 0.5d | 0d | start no earlier than 2025-09-27 17:00 |  | Luis Sousa | 40h |  | 2,800 | 2,800 |  |
| 36 | 4.4 | **2nd Pages review** |  | 11.5d | 2025-11-06 08:00 | 2025-11-21 12:00 |  |  |  | 2015-09-04 16:00 | 2015-09-23 16:00 | 13d | 0.5d |  |  |  |  | 120h |  | 6,345 | 6,345 |  |
| 37 | 4.4.1 | Proof and review |  | 6.5d | 2025-11-06 08:00 | 2025-11-14 12:00 | 35 |  |  | 2015-09-04 16:00 | 2015-09-15 11:00 | 6.5d | 0.5d | 0d | start no earlier than 2025-09-27 17:00 |  | Hany Morcos | 40h |  | 1,800 | 1,800 |  |
| 38 | 4.4.2 | Send proofed pages to Production | milestone | 0d | 2025-11-14 12:00 | 2025-11-14 12:00 | 37 |  |  | 2015-09-15 11:00 | 2015-09-15 11:00 | 0d | 0.5d | 0d | start no earlier than 2025-09-27 17:00 |  | Hany Morcos |  |  |  |  |  |
| 39 | 4.4.3 | Final review |  | 5d | 2025-11-14 13:00 | 2025-11-21 12:00 | 38 |  |  | 2015-09-16 16:00 | 2015-09-23 16:00 | 5d | 0.5d |  | start no earlier than 2025-09-27 17:00 |  | Jane Dow; Hany Morcos [50%]; Carole Poland [50%]; Bound galley proofs [20 copies] | 80h |  | 4,545 | 4,545 |  |
| 40 | 4.5 | **Design book's companion website** |  | 10d | 2025-11-06 08:00 | 2025-11-19 17:00 | 30 |  |  | 2015-09-04 16:00 | 2015-09-18 16:00 | 10d | 2d |  |  |  |  | 88h |  | 5,834 | 5,834 |  |
| 41 | 4.5.1 | Create mockup |  | 4.5d | 2025-11-06 08:00 | 2025-11-17 17:00 |  |  |  | 2015-09-04 16:00 | 2015-09-16 16:00 | 4.5d | 2d | 0d | start no earlier than 2025-09-27 17:00 |  | Luis Sousa; Hany Morcos | 48h |  | 2,610 | 2,610 |  |
| 42 | 4.5.2 | Review with author |  | 2d | 2025-11-18 08:00 | 2025-11-19 17:00 | 41 |  |  | 2015-09-16 16:00 | 2015-09-18 16:00 | 2d | 2d |  | start no earlier than 2025-09-27 17:00 |  | Luis Sousa; Tad Orman; Travel [0.1%]; Dan Jump [50%] | 40h |  | 3,224 | 3,224 |  |
| 43 | 5 | **Color prep and printing** |  | 44d | 2025-11-24 08:00 | 2026-01-22 17:00 | 40 |  |  | 2015-09-23 16:00 | 2015-11-26 16:00 | 46d | 0d |  |  |  |  | 328h |  | 5,310 | 5,310 |  |
| 44 | 5.1 | Send to color house |  | 1d | 2025-11-24 08:00 | 2025-11-24 17:00 | 36 |  |  | 2015-09-23 16:00 | 2015-09-28 16:00 | 1d | 0d |  | start no earlier than 2025-09-27 17:00 | Monday-Wednesday | Hany Morcos | 8h |  | 310 | 310 |  |
| 45 | 5.2 | Generate proofs |  | 10d | 2025-11-25 08:00 | 2025-12-08 17:00 | 44 |  |  | 2015-09-28 16:00 | 2015-10-12 16:00 | 10d | 0d |  | start no earlier than 2025-09-27 17:00 |  | Color Setting Services | 80h |  | 5,000 | 5,000 |  |
| 46 | 5.3 | Print and ship |  | 30d | 2025-12-12 08:00 | 2026-01-22 17:00 | 45FS+3d |  |  | 2015-10-15 16:00 | 2015-11-26 16:00 | 30d | 0d |  | start no earlier than 2025-09-27 17:00 |  | Printing Service | 240h |  |  |  |  |
| 47 | 6 | **Book launch prep** |  | 22d | 2025-11-25 08:00 | 2025-12-24 17:00 |  |  |  | 2015-09-28 16:00 | 2015-10-28 16:00 | 22d | 21d |  |  |  |  | 212h |  | 9,442 | 9,442 |  |
| 48 | 6.1 | Launch planning |  | 5d | 2025-11-25 08:00 | 2025-12-01 17:00 | 44 |  |  | 2015-09-28 16:00 | 2015-10-05 16:00 | 5d | 21d | 0d | start no earlier than 2025-09-27 17:00 |  | Carole Poland [50%]; Jane Dow | 36h |  | 2,062 | 2,062 |  |
| 49 | 6.2 | Assign launch team members |  | 1d | 2025-12-02 08:00 | 2025-12-02 17:00 | 48 |  |  | 2015-10-05 16:00 | 2015-10-06 16:00 | 1d | 21d | 0d | start no earlier than 2025-09-27 17:00 |  | Carole Poland | 8h |  | 420 | 420 |  |
| 50 | 6.3 | Complete author questionnaire |  | 5d | 2025-12-03 08:00 | 2025-12-09 17:00 | 49 |  |  | 2015-10-06 16:00 | 2015-10-13 16:00 | 5d | 21d | 0d | start no earlier than 2025-09-27 17:00 |  | Hany Morcos; Tad Orman; Travel [0.1%] | 80h |  | 3,550 | 3,550 |  |
| 51 | 6.4 | Schedule author interviews |  | 1d | 2025-12-10 08:00 | 2025-12-10 17:00 | 50 |  |  | 2015-10-13 16:00 | 2015-10-14 16:00 | 1d | 21d | 0d | start no earlier than 2025-09-27 17:00 |  | Hany Morcos | 8h |  | 310 | 310 |  |
| 52 | 6.5 | Design and order marketing material |  | 10d | 2025-12-11 08:00 | 2025-12-24 17:00 | 51 |  |  | 2015-10-14 16:00 | 2015-10-28 16:00 | 10d | 21d |  | start no earlier than 2025-09-27 17:00 |  | Hany Morcos | 80h |  | 3,100 | 3,100 |  |
